# 总进度计划搭接关系

Schedule from MS Project, 2023-09-25 to 2025-03-31.

## Calendars

- 标准: Mon-Sun 08:00-12:00, 13:00-17:00. Exceptions (off unless hours are given): 2024-02-09 to 2024-02-18 (春节).

## Schedule

| ID | WBS | Task | Duration | Start | Finish | Predecessors | Baseline start | Baseline finish | Baseline duration | Baseline 1 start | Baseline 1 finish | Total slack | Free slack | Constraint |
| --- | --- | --- | --- | --- | --- | --- | --- | --- | --- | --- | --- | --- | --- | --- |
| 1 | 1 | **A1区施工** | 544d | 2023-09-25 | 2025-03-31 |  | 2023-09-25 | 2025-01-29 | 493d | 2023-09-25 | 2025-01-29 | 0d |  |  |
| 2 | 1.1 | **土方开挖** | 111d | 2023-09-25 | 2024-01-13 |  | 2023-09-25 | 2023-12-27 | 94d | 2023-09-25 | 2023-12-27 | 2d |  |  |
| 3 | 1.1.1 | **首层土方开挖** | 25d | 2023-09-25 | 2023-10-19 |  | 2023-09-25 | 2023-10-19 | 25d | 2023-09-25 | 2023-10-19 | 14d |  |  |
| 4 | 1.1.1.1 | 2、3、6段首层土方开挖 | 10d | 2023-09-25 | 2023-10-04 |  | 2023-09-25 | 2023-10-04 | 10d | 2023-09-25 | 2023-10-04 | 14d | 0d |  |
| 5 | 1.1.1.2 | 1、4、5段首层土方开挖 | 10d | 2023-09-30 | 2023-10-09 | 4SS+5d | 2023-09-30 | 2023-10-09 | 10d | 2023-09-30 | 2023-10-09 | 14d | 0d |  |
| 6 | 1.1.1.3 | 7、8、9段首层土方开挖 | 10d | 2023-10-05 | 2023-10-14 | 5SS+5d | 2023-10-05 | 2023-10-14 | 10d | 2023-10-05 | 2023-10-14 | 14d | 0d |  |
| 7 | 1.1.1.4 | 10、11、38段首层土方开挖 | 10d | 2023-10-10 | 2023-10-19 | 6SS+5d | 2023-10-10 | 2023-10-19 | 10d | 2023-10-10 | 2023-10-19 | 14d | 0d |  |
| 8 | 1.1.2 | **混凝土支撑施工** | 25d | 2023-10-10 | 2023-11-03 |  | 2023-10-10 | 2023-11-03 | 25d | 2023-10-10 | 2023-11-03 | 14d | 0d |  |
| 9 | 1.1.2.1 | 2、3、6段混凝土支撑施工 | 10d | 2023-10-10 | 2023-10-19 | 4SS+15d | 2023-10-10 | 2023-10-19 | 10d | 2023-10-10 | 2023-10-19 | 29d |  |  |
| 10 | 1.1.2.2 | 1、4、5段混凝土支撑施工 | 10d | 2023-10-15 | 2023-10-24 | 5SS+15d | 2023-10-15 | 2023-10-24 | 10d | 2023-10-15 | 2023-10-24 | 24d |  |  |
| 11 | 1.1.2.3 | 7、8、9段混凝土支撑施工 | 10d | 2023-10-20 | 2023-10-29 | 6SS+15d | 2023-10-20 | 2023-10-29 | 10d | 2023-10-20 | 2023-10-29 | 19d |  |  |
| 12 | 1.1.2.4 | 10、11、38段混凝土支撑施工 | 10d | 2023-10-25 | 2023-11-03 | 7SS+15d | 2023-10-25 | 2023-11-03 | 10d | 2023-10-25 | 2023-11-03 | 14d |  |  |
| 13 | 1.1.3 | **第二层土方开挖** | 62d | 2023-11-13 | 2024-01-13 | 8FS+9d | 2023-11-13 | 2023-12-27 | 45d | 2023-11-13 | 2023-12-27 | 2d |  |  |
| 14 | 1.1.3.1 | 2、3、6段第二层土方开挖 | 11d | 2023-11-13 | 2023-11-23 |  | 2023-11-13 | 2023-11-23 | 11d | 2023-11-13 | 2023-11-23 | 14d | 0d |  |
| 15 | 1.1.3.2 | 1、4、5段第二层土方开挖 | 11d | 2023-11-24 | 2023-12-04 | 14 | 2023-11-24 | 2023-12-04 | 11d | 2023-11-24 | 2023-12-04 | 14d | 0d |  |
| 16 | 1.1.3.3 | 7、8、9段第二层土方开挖 | 17d | 2023-12-25 | 2024-01-10 |  | 2023-12-05 | 2023-12-15 | 11d | 2023-12-05 | 2023-12-15 | 5d | 0d | start no earlier than 2023-12-25 |
| 17 | 1.1.3.4 | 10、11、38段第二层土方开挖 | 17d | 2023-12-28 | 2024-01-13 |  | 2023-12-16 | 2023-12-27 | 12d | 2023-12-16 | 2023-12-27 | 0d |  | start no earlier than 2023-12-28 |
| 18 | 1.2 | **基础施工** | 61d | 2023-11-24 | 2024-01-23 |  | 2023-11-24 | 2024-02-12 | 81d | 2023-11-25 | 2024-02-12 | 0d |  |  |
| 19 | 1.2.1 | 桩基处理及检测 | 30d | 2023-11-24 | 2023-12-23 | 14 | 2023-11-24 | 2023-12-23 | 30d | 2023-11-25 | 2023-12-24 | 24d | 6d |  |
| 20 | 1.2.2 | **垫层、砖胎模施工（含验槽）** | 47d | 2023-12-01 | 2024-01-16 |  | 2023-12-01 | 2024-01-11 | 42d | 2023-12-01 | 2024-01-11 | 2d |  |  |
| 21 | 1.2.2.1 | 2、3、6段垫层、砖胎模施工 | 15d | 2023-12-01 | 2023-12-15 | 19SS+1d | 2023-12-01 | 2023-12-15 | 15d | 2023-12-01 | 2023-12-15 | 18d | 0d | finish no earlier than 2023-12-15 |
| 22 | 1.2.2.2 | 1、4、5段垫层、砖胎模施工 | 15d | 2023-12-05 | 2023-12-19 | 15 | 2023-12-05 | 2023-12-19 | 15d | 2023-12-06 | 2023-12-20 | 14d | 0d |  |
| 23 | 1.2.2.3 | 7、8、9段垫层、砖胎模施工 | 18d | 2023-12-27 | 2024-01-13 | 16FF+3d | 2023-12-16 | 2023-12-30 | 15d | 2023-12-16 | 2023-12-30 | 5d | 0d |  |
| 24 | 1.2.2.4 | 10、11、38段垫层、砖胎模施工 | 18d | 2023-12-30 | 2024-01-16 | 17FF+3d | 2023-12-28 | 2024-01-11 | 15d | 2023-12-28 | 2024-01-11 | 0d |  |  |

| ID | WBS | Task | Duration | Start | Finish | Predecessors | Baseline start | Baseline finish | Baseline duration | Baseline 1 start | Baseline 1 finish | Total slack | Free slack |
| --- | --- | --- | --- | --- | --- | --- | --- | --- | --- | --- | --- | --- | --- |
| 25 | 1.2.3 | **防水施工** | 47d | 2023-12-04 | 2024-01-19 |  | 2023-12-08 | 2024-01-18 | 42d | 2023-12-08 | 2024-01-18 | 2d |  |
| 26 | 1.2.3.1 | 2、3、6段防水施工 | 15d | 2023-12-04 | 2023-12-18 | 21FF+3d | 2023-12-08 | 2023-12-22 | 15d | 2023-12-08 | 2023-12-22 | 18d | 0d |
| 27 | 1.2.3.2 | 1、4、5段防水施工 | 15d | 2023-12-08 | 2023-12-22 | 22FF+3d | 2023-12-12 | 2023-12-26 | 15d | 2023-12-13 | 2023-12-27 | 14d | 0d |
| 28 | 1.2.3.3 | 7、8、9段防水施工 | 15d | 2024-01-02 | 2024-01-16 | 23FF+3d | 2023-12-23 | 2024-01-06 | 15d | 2023-12-23 | 2024-01-06 | 5d | 0d |
| 29 | 1.2.3.4 | 10、11、38段防水施工 | 15d | 2024-01-05 | 2024-01-19 | 24FF+3d | 2024-01-04 | 2024-01-18 | 15d | 2024-01-04 | 2024-01-18 | 0d |  |
| 30 | 1.2.4 | **基础结构施工（含换撑）** | 46d | 2023-12-09 | 2024-01-23 |  | 2023-12-13 | 2024-02-12 | 62d | 2023-12-13 | 2024-02-12 | 0d |  |
| 31 | 1.2.4.1 | 2、3、6段基础结构施工 | 28d | 2023-12-09 | 2024-01-05 | 26SS+5d | 2023-12-13 | 2024-01-16 | 35d | 2023-12-13 | 2024-01-16 | 18d | 0d |
| 32 | 1.2.4.2 | 1、4、5段基础结构施工 | 28d | 2023-12-13 | 2024-01-09 | 27SS+5d | 2023-12-17 | 2024-01-20 | 35d | 2023-12-18 | 2024-01-21 | 14d | 0d |
| 33 | 1.2.4.3 | 7、8、9段基础结构施工 | 12d | 2024-01-03 | 2024-01-14 | 28SS+1d | 2023-12-28 | 2024-01-31 | 35d | 2023-12-28 | 2024-01-31 | 5d | 0d |
| 34 | 1.2.4.4 | 10、11、38段基础结构施工 | 18d | 2024-01-06 | 2024-01-23 | 29SS+1d | 2024-01-09 | 2024-02-12 | 35d | 2024-01-09 | 2024-02-12 | 0d |  |
| 35 | 1.3 | **地下结构施工** | 112d | 2023-12-24 | 2024-04-23 |  | 2023-12-28 | 2024-05-02 | 127d | 2023-12-29 | 2024-05-02 | 0d |  |
| 36 | 1.3.1 | **地下二层结构施工（含换撑）** | 39d | 2023-12-24 | 2024-01-31 |  | 2023-12-28 | 2024-03-08 | 72d | 2023-12-29 | 2024-03-08 | 0d |  |
| 37 | 1.3.1.1 | 2、3、6段地下二层结构施工 | 21d | 2023-12-24 | 2024-01-13 | 31SS+15d | 2023-12-28 | 2024-02-10 | 45d | 2023-12-29 | 2024-02-11 | 18d |  |
| 38 | 1.3.1.2 | 1、4、5段地下二层结构施工 | 21d | 2023-12-28 | 2024-01-17 | 32SS+15d | 2024-01-01 | 2024-02-14 | 45d | 2024-01-03 | 2024-02-16 | 14d |  |
| 39 | 1.3.1.3 | 7、8、9段地下二层结构施工 | 17d | 2024-01-10 | 2024-01-26 | 33SS+7d | 2024-01-12 | 2024-02-25 | 45d | 2024-01-12 | 2024-02-25 | 5d |  |
| 40 | 1.3.1.4 | 10、11、38段地下二层结构施工 | 17d | 2024-01-15 | 2024-01-31 | 34SS+9d | 2024-01-24 | 2024-03-08 | 45d | 2024-01-24 | 2024-03-08 | 0d |  |
| 41 | 1.3.2 | 支撑拆撑 | 20d | 2024-02-19 | 2024-03-09 | 36FS+8d | 2024-03-19 | 2024-04-12 | 25d |  |  | 0d |  |
| 42 | 1.3.3 | **地下一层结构施工** | 55d | 2024-02-29 | 2024-04-23 | 41SS+10d | 2024-03-19 | 2024-05-02 | 45d | 2024-03-19 | 2024-05-02 | 0d |  |
| 43 | 1.3.3.1 | 2、3、6段地下一层结构施工 | 45d | 2024-02-29 | 2024-04-13 |  | 2024-03-19 | 2024-05-02 | 45d | 2024-03-19 | 2024-05-02 | 10d | 0d |
| 44 | 1.3.3.2 | 1、4、5段地下一层结构施工 | 45d | 2024-02-29 | 2024-04-13 |  | 2024-03-19 | 2024-05-02 | 45d | 2024-03-19 | 2024-05-02 | 10d | 0d |
| 45 | 1.3.3.3 | 7、8、9段地下一层结构施工 | 45d | 2024-03-10 | 2024-04-23 | 41 | 2024-03-19 | 2024-05-02 | 45d | 2024-03-19 | 2024-05-02 | 0d |  |
| 46 | 1.3.3.4 | 10、11、38段地下一层结构施工 | 45d | 2024-03-10 | 2024-04-23 | 41 | 2024-03-19 | 2024-05-02 | 45d | 2024-03-19 | 2024-05-02 | 0d |  |
| 47 | 1.4 | **地下室外墙、顶板防水** | 30d | 2024-04-24 | 2024-05-23 |  | 2024-05-10 | 2024-05-19 | 10d | 2024-05-10 | 2024-05-19 | 209d |  |
| 48 | 1.4.1 | 2、3、6段地下室外墙、顶板防水 | 15d | 2024-04-24 | 2024-05-08 | 43FS+10d | 2024-05-10 | 2024-05-19 | 10d | 2024-05-10 | 2024-05-19 | 209d | 0d |
| 49 | 1.4.2 | 1、4、5段地下室外墙、顶板防水 | 15d | 2024-04-24 | 2024-05-08 | 44FS+10d | 2024-05-10 | 2024-05-19 | 10d | 2024-05-10 | 2024-05-19 | 209d | 0d |
| 50 | 1.4.3 | 7、8、9段地下室外墙、顶板防水 | 15d | 2024-05-09 | 2024-05-23 | 48 | 2024-05-10 | 2024-05-19 | 10d | 2024-05-10 | 2024-05-19 | 209d | 0d |
| 51 | 1.4.4 | 10、11、38段地下室外墙、顶板防水 | 15d | 2024-05-09 | 2024-05-23 | 49 | 2024-05-10 | 2024-05-19 | 10d | 2024-05-10 | 2024-05-19 | 209d | 0d |

Notes:
- 30: 基础及换撑施工完成后拆除混凝土支撑
- 35: 跨春节假期，2024年2月9日春节

| ID | WBS | Task | Duration | Start | Finish | Predecessors | Baseline start | Baseline finish | Baseline duration | Baseline 1 start | Baseline 1 finish | Total slack | Free slack | Constraint |
| --- | --- | --- | --- | --- | --- | --- | --- | --- | --- | --- | --- | --- | --- | --- |
| 52 | 1.5 | **室外土方回填** | 30d | 2024-05-10 | 2024-06-08 |  | 2024-06-04 | 2024-06-13 | 10d | 2024-06-04 | 2024-06-13 | 209d | 129d |  |
| 53 | 1.5.1 | 2、3、6段室外土方回填 | 15d | 2024-05-10 | 2024-05-24 | 48FS+1d | 2024-06-04 | 2024-06-13 | 10d | 2024-06-04 | 2024-06-13 | 224d |  |  |
| 54 | 1.5.2 | 1、4、5段室外土方回填 | 15d | 2024-05-10 | 2024-05-24 | 49FS+1d | 2024-06-04 | 2024-06-13 | 10d | 2024-06-04 | 2024-06-13 | 224d |  |  |
| 55 | 1.5.3 | 7、8、9段室外土方回填 | 15d | 2024-05-25 | 2024-06-08 | 50FS+1d | 2024-06-04 | 2024-06-13 | 10d | 2024-06-04 | 2024-06-13 | 209d |  |  |
| 56 | 1.5.4 | 10、11、38段室外土方回填 | 15d | 2024-05-25 | 2024-06-08 | 51FS+1d | 2024-06-04 | 2024-06-13 | 10d | 2024-06-04 | 2024-06-13 | 209d |  |  |
| 57 | 1.6 | **地上结构施工** | 130d | 2024-04-24 | 2024-08-31 | 42 | 2024-05-03 | 2024-08-15 | 105d | 2024-05-03 | 2024-08-15 | 0d |  |  |
| 58 | 1.6.1 | 1-2层结构施工（含夹层） | 55d | 2024-04-24 | 2024-06-17 |  | 2024-05-03 | 2024-06-16 | 45d | 2024-05-03 | 2024-06-16 | 0d |  |  |
| 59 | 1.6.2 | 3-7层结构施工 | 75d | 2024-06-18 | 2024-08-31 | 58 | 2024-06-17 | 2024-08-15 | 60d | 2024-06-17 | 2024-08-15 | 0d |  |  |
| 60 | 1.7 | **二次结构施工** | 35d | 2024-09-01 | 2024-10-05 | 57 | 2024-08-16 | 2024-10-24 | 70d | 2024-08-16 | 2024-10-24 | 0d |  |  |
| 61 | 1.7.1 | 1-3层二次结构施工 | 15d | 2024-09-01 | 2024-09-15 |  | 2024-08-16 | 2024-09-14 | 30d | 2024-08-16 | 2024-09-14 | 0d |  |  |
| 62 | 1.7.2 | 4-7层二次结构施工 | 20d | 2024-09-16 | 2024-10-05 | 61 | 2024-09-15 | 2024-10-24 | 40d | 2024-09-15 | 2024-10-24 | 0d |  |  |
| 63 | 1.8 | 结构验收 | 10d | 2024-10-06 | 2024-10-15 | 60 | 2024-10-25 | 2024-11-03 | 10d | 2024-10-25 | 2024-11-03 | 0d |  | finish no earlier than 2024-09-26 |
| 64 | 1.9 | 屋面工程 | 30d | 2024-10-16 | 2024-11-14 | 63 | 2024-11-04 | 2024-12-03 | 30d | 2024-11-04 | 2024-12-03 | 137d |  | finish no earlier than 2024-10-26 |
| 65 | 1.10 | **地下室墙面、顶棚装修** | 80d | 2024-06-03 | 2024-08-21 | 35FS+40d | 2024-06-12 | 2024-08-30 | 80d | 2024-06-12 | 2024-08-30 | 202d |  |  |
| 66 | 1.10.1 | 2、3、6段地下室墙面、顶棚装修 | 20d | 2024-06-03 | 2024-06-22 |  | 2024-06-12 | 2024-07-01 | 20d | 2024-06-12 | 2024-07-01 | 202d | 0d |  |
| 67 | 1.10.2 | 1、4、5段地下室墙面、顶棚装修 | 20d | 2024-06-23 | 2024-07-12 | 66 | 2024-07-02 | 2024-07-21 | 20d | 2024-07-02 | 2024-07-21 | 202d | 0d |  |
| 68 | 1.10.3 | 7、8、9段地下室墙面、顶棚装修 | 20d | 2024-07-13 | 2024-08-01 | 67 | 2024-07-22 | 2024-08-10 | 20d | 2024-07-22 | 2024-08-10 | 202d | 0d |  |
| 69 | 1.10.4 | 10、11、38段地下室墙面、顶棚装修 | 20d | 2024-08-02 | 2024-08-21 | 68 | 2024-08-11 | 2024-08-30 | 20d | 2024-08-11 | 2024-08-30 | 202d | 0d |  |
| 70 | 1.11 | **地下室地面施工** | 80d | 2024-06-23 | 2024-09-10 |  | 2024-07-02 | 2024-09-19 | 80d | 2024-07-02 | 2024-09-19 | 202d |  |  |
| 71 | 1.11.1 | 2、3、6段地下室地面施工 | 20d | 2024-06-23 | 2024-07-12 | 66 | 2024-07-02 | 2024-07-21 | 20d | 2024-07-02 | 2024-07-21 | 262d |  |  |
| 72 | 1.11.2 | 1、4、5段地下室地面施工 | 20d | 2024-07-13 | 2024-08-01 | 67 | 2024-07-22 | 2024-08-10 | 20d | 2024-07-22 | 2024-08-10 | 242d |  |  |
| 73 | 1.11.3 | 7、8、9段地下室地面施工 | 20d | 2024-08-02 | 2024-08-21 | 68 | 2024-08-11 | 2024-08-30 | 20d | 2024-08-11 | 2024-08-30 | 222d |  |  |
| 74 | 1.11.4 | 10、11、38段地下室地面施工 | 20d | 2024-08-22 | 2024-09-10 | 69 | 2024-08-31 | 2024-09-19 | 20d | 2024-08-31 | 2024-09-19 | 202d |  |  |
| 75 | 1.12 | 塔楼粗装修施工 | 45d | 2024-10-16 | 2024-11-29 | 63 | 2024-11-04 | 2024-12-18 | 45d | 2024-11-04 | 2024-12-18 | 0d |  |  |
| 76 | 1.13 | 塔楼外墙施工 | 60d | 2024-10-16 | 2024-12-14 | 63 | 2024-11-04 | 2025-01-02 | 60d | 2024-11-04 | 2025-01-02 | 107d |  |  |
| 77 | 1.14 | 电梯安装、调试 | 60d | 2024-10-16 | 2024-12-14 | 63 | 2024-11-04 | 2025-01-02 | 60d | 2024-11-04 | 2025-01-02 | 107d |  |  |
| 78 | 1.15 | 给排水工程 | 60d | 2024-10-16 | 2024-12-14 | 63 | 2024-11-04 | 2025-01-02 | 60d | 2024-11-11 | 2025-01-09 | 107d |  |  |
| 79 | 1.16 | 电气工程 | 60d | 2024-10-16 | 2024-12-14 | 63 | 2024-11-04 | 2025-01-02 | 60d | 2024-11-11 | 2025-01-09 | 107d |  |  |
| 80 | 1.17 | 通风工程 | 60d | 2024-10-16 | 2024-12-14 | 63 | 2024-11-04 | 2025-01-02 | 60d | 2024-11-11 | 2025-01-09 | 107d |  |  |
| 81 | 1.18 | 智能化工程 | 60d | 2024-10-16 | 2024-12-14 | 63 | 2024-11-04 | 2025-01-02 | 60d | 2024-11-11 | 2025-01-09 | 107d |  |  |
| 82 | 1.19 | 消防工程 | 60d | 2024-10-16 | 2024-12-14 | 63 | 2024-11-04 | 2025-01-02 | 60d | 2024-11-11 | 2025-01-09 | 107d |  |  |
| 83 | 1.20 | 酒店装修 | 152d | 2024-10-31 | 2025-03-31 | 75SS+15d |  |  |  |  |  | 0d |  |  |
| 84 | 1.21 | 室外市政工程 | 57d | 2024-10-16 | 2024-12-11 | 52, 63 | 2024-11-04 | 2024-12-30 | 57d | 2024-11-01 | 2024-12-30 | 80d | 0d |  |
| 85 | 1.22 | 室外景观铺装 | 30d | 2024-12-12 | 2025-01-10 | 84 | 2024-12-31 | 2025-01-29 | 30d | 2024-12-31 | 2025-01-29 | 80d |  |  |

Notes:
- 57: 整体装配式结构（2023年12月15日前完成图纸深化工作）。
- 58: 目前无图纸，按经验15天/层考虑
- 59: 目前无图纸，按经验15天/层考虑
- 61: 目前无图纸，按经验10天/层考虑
- 62: 目前无图纸，按经验10天/层考虑
- 63: 地下室提前进行结构验收
- 76: 目前无设计图纸，考虑公共区域粗装修施工。
- 78: 包括地下室及主楼
- 79: 包括地下室及主楼
- 80: 包括地下室及主楼
- 81: 包括地下室及主楼
- 82: 包括地下室及主楼
- 85: 2025年1月28日春节

| ID | WBS | Task | Duration | Start | Finish | Predecessors | Baseline start | Baseline finish | Baseline duration | Baseline 1 start | Baseline 1 finish | Total slack | Free slack | Constraint |
| --- | --- | --- | --- | --- | --- | --- | --- | --- | --- | --- | --- | --- | --- | --- |
| 86 | 2 | **A2区施工** | 529.5d | 2023-10-09 | 2025-03-31 |  | 2023-10-09 | 2025-01-29 | 478.5d | 2023-10-09 | 2025-01-29 | 0d |  |  |
| 87 | 2.1 | **土方开挖** | 164.5d | 2023-10-09 | 2024-03-31 |  | 2023-10-09 | 2024-01-10 | 93.5d | 2023-10-09 | 2024-01-10 | 64d |  |  |
| 88 | 2.1.1 | **首层土方开挖** | 25d | 2023-10-09 | 2023-11-03 |  | 2023-10-09 | 2023-11-03 | 25d | 2023-10-09 | 2023-11-03 | 64d |  |  |
| 89 | 2.1.1.1 | 26、27、28段首层土方开挖 | 8.5d | 2023-10-09 | 2023-10-17 |  | 2023-10-09 | 2023-10-17 | 8.5d | 2023-10-09 | 2023-10-17 | 64d | 0d | finish no earlier than 2023-10-17 |
| 90 | 2.1.1.2 | 29、30、32、36段首层土方开挖 | 8.5d | 2023-10-14 | 2023-10-22 | 89SS+5d | 2023-10-14 | 2023-10-22 | 8.5d | 2023-10-14 | 2023-10-22 | 504.5d | 0d |  |
| 91 | 2.1.1.3 | 34、37、41段首层土方开挖 | 8.5d | 2023-10-19 | 2023-10-27 | 90SS+5d | 2023-10-19 | 2023-10-27 | 8.5d | 2023-10-19 | 2023-10-27 | 504.5d | 0d |  |
| 92 | 2.1.1.4 | 31、33、35、40段首层土方开挖 | 10d | 2023-10-24 | 2023-11-03 | 91SS+5d | 2023-10-24 | 2023-11-03 | 10d | 2023-10-26 | 2023-11-03 | 504.5d |  |  |
| 93 | 2.1.2 | **混凝土支撑施工** | 30d | 2023-10-18 | 2023-11-16 |  | 2023-10-18 | 2023-11-16 | 30d | 2023-10-18 | 2023-11-16 | 64d | 0d |  |
| 94 | 2.1.2.1 | 26、27、28段混凝土支撑施工 | 10d | 2023-10-18 | 2023-10-27 | 89 | 2023-10-18 | 2023-10-27 | 10d | 2023-10-18 | 2023-10-27 | 64d | 0d |  |
| 95 | 2.1.2.2 | 29、30、32、36段混凝土支撑施工 | 10d | 2023-10-23 | 2023-11-01 | 94SS+5d | 2023-10-23 | 2023-11-01 | 10d | 2023-10-23 | 2023-11-01 | 64d | 0d |  |
| 96 | 2.1.2.3 | 34、37、41段混凝土支撑施工 | 10d | 2023-10-28 | 2023-11-06 | 95SS+5d | 2023-10-28 | 2023-11-06 | 10d | 2023-10-28 | 2023-11-06 | 64d | 0d |  |
| 97 | 2.1.2.4 | 31、33、35、40段混凝土支撑施工 | 10d | 2023-11-07 | 2023-11-16 | 96 | 2023-11-07 | 2023-11-16 | 10d | 2023-11-07 | 2023-11-16 | 64d |  |  |
| 98 | 2.1.3 | **第二层土方开挖** | 106d | 2023-12-07 | 2024-03-31 | 93FS+20d | 2023-11-27 | 2024-01-10 | 45d | 2023-11-27 | 2024-01-10 | 0d |  |  |
| 99 | 2.1.3.1 | 26、27、28段第二层土方开挖 | 15d | 2023-12-07 | 2023-12-21 |  | 2023-11-27 | 2023-12-11 | 15d | 2023-11-27 | 2023-12-11 | 66d | 0d |  |
| 100 | 2.1.3.2 | 29、30、32、36段第二层土方开挖 | 22d | 2023-12-25 | 2024-01-15 | 99SS+18d | 2023-12-07 | 2023-12-21 | 15d | 2023-12-07 | 2023-12-21 | 66d | 0d |  |
| 101 | 2.1.3.3 | 34、37、41段第二层土方开挖 | 20d | 2024-02-19 | 2024-03-09 |  | 2023-12-17 | 2023-12-31 | 15d | 2023-12-17 | 2023-12-31 | 0d |  | start no earlier than 2024-02-19 |
| 102 | 2.1.3.4 | 31、33、35、40段第二层土方开挖 | 22d | 2024-03-10 | 2024-03-31 | 101 | 2023-12-27 | 2024-01-10 | 15d | 2023-12-27 | 2024-01-10 | 0d |  |  |
| 103 | 2.2 | **基础施工** | 118d | 2023-12-09 | 2024-04-14 |  | 2023-12-12 | 2024-03-07 | 87d | 2023-12-12 | 2024-03-07 | 85d |  |  |
| 104 | 2.2.1 | 桩基处理及检测 | 32d | 2023-12-22 | 2024-01-22 | 99 | 2023-12-12 | 2024-01-12 | 32d | 2023-12-12 | 2024-01-12 | 424d |  |  |
| 105 | 2.2.2 | **垫层、砖胎模施工** | 105d | 2023-12-09 | 2024-04-01 |  | 2023-12-14 | 2024-01-25 | 43d | 2023-12-14 | 2024-01-25 | 0d |  |  |
| 106 | 2.2.2.1 | 26、27、28段垫层、砖胎模施工 | 15d | 2023-12-09 | 2023-12-23 | 99SS+2d | 2023-12-14 | 2023-12-28 | 15d | 2023-12-14 | 2023-12-28 | 85d | 0d |  |
| 107 | 2.2.2.2 | 29、30、32、36段垫层、砖胎模施工 | 20d | 2023-12-28 | 2024-01-16 | 100SS+3d | 2023-12-22 | 2024-01-05 | 15d | 2023-12-22 | 2024-01-05 | 66d | 0d |  |
| 108 | 2.2.2.3 | 34、37、41段垫层、砖胎模施工 | 18d | 2024-02-22 | 2024-03-10 | 101SS+3d | 2024-01-01 | 2024-01-15 | 15d | 2024-01-01 | 2024-01-15 | 20d | 0d |  |
| 109 | 2.2.2.4 | 31、33、35、40段垫层、砖胎模施工 | 20d | 2024-03-13 | 2024-04-01 | 102SS+3d | 2024-01-11 | 2024-01-25 | 15d | 2024-01-11 | 2024-01-25 | 0d |  |  |

| ID | WBS | Task | Duration | Start | Finish | Predecessors | Baseline start | Baseline finish | Baseline duration | Baseline 1 start | Baseline 1 finish | Total slack | Free slack | Constraint |
| --- | --- | --- | --- | --- | --- | --- | --- | --- | --- | --- | --- | --- | --- | --- |
| 110 | 2.2.3 | **防水施工** | 105d | 2023-12-11 | 2024-04-03 |  | 2023-12-29 | 2024-02-01 | 35d | 2023-12-29 | 2024-02-01 | 0d |  |  |
| 111 | 2.2.3.1 | 26、27、28段防水施工 | 15d | 2023-12-11 | 2023-12-25 | 106SS+2d | 2023-12-29 | 2024-01-04 | 7d | 2023-12-29 | 2024-01-04 | 85d | 0d |  |
| 112 | 2.2.3.2 | 29、30、32、36段防水施工 | 20d | 2023-12-30 | 2024-01-18 | 107SS+2d | 2024-01-06 | 2024-01-12 | 7d | 2024-01-06 | 2024-01-12 | 66d | 0d |  |
| 113 | 2.2.3.3 | 34、37、41段防水施工 | 18d | 2024-02-24 | 2024-03-12 | 108SS+2d | 2024-01-16 | 2024-01-22 | 7d | 2024-01-16 | 2024-01-22 | 20d | 0d |  |
| 114 | 2.2.3.4 | 31、33、35、40段防水施工 | 20d | 2024-03-15 | 2024-04-03 | 109SS+2d | 2024-01-26 | 2024-02-01 | 7d | 2024-01-26 | 2024-02-01 | 0d |  |  |
| 115 | 2.2.4 | **基础结构施工（含换撑）** | 115d | 2023-12-12 | 2024-04-14 |  | 2024-01-05 | 2024-03-07 | 63d | 2024-01-05 | 2024-03-07 | 0d |  |  |
| 116 | 2.2.4.1 | 26、27、28段基础结构施工 | 30d | 2023-12-12 | 2024-01-10 | 111SS+1d | 2024-01-05 | 2024-02-08 | 35d | 2024-01-05 | 2024-02-08 | 85d | 14d |  |
| 117 | 2.2.4.2 | 29、30、32、36段基础结构施工 | 30d | 2023-12-31 | 2024-01-29 | 112SS+1d | 2024-01-13 | 2024-02-16 | 35d | 2024-01-13 | 2024-02-16 | 66d | 0d |  |
| 118 | 2.2.4.3 | 34、37、41段基础结构施工 | 30d | 2024-02-25 | 2024-03-25 | 113SS+1d | 2024-01-23 | 2024-02-26 | 35d | 2024-01-23 | 2024-02-26 | 20d | 0d |  |
| 119 | 2.2.4.4 | 31、33、35、40段基础结构施工 | 30d | 2024-03-16 | 2024-04-14 | 114SS+1d | 2024-02-02 | 2024-03-07 | 35d | 2024-02-02 | 2024-03-07 | 0d |  |  |
| 120 | 2.3 | **地下结构施工** | 191d | 2024-01-10 | 2024-07-28 |  | 2024-01-20 | 2024-06-09 | 142d | 2024-01-20 | 2024-06-09 | 71d | 0d |  |
| 121 | 2.3.1 | **地下二层结构施工（含换撑）** | 116d | 2024-01-10 | 2024-05-14 |  | 2024-01-20 | 2024-04-15 | 87d | 2024-01-20 | 2024-04-15 | 0d |  |  |
| 122 | 2.3.1.1 | 26、27、28段地下二层结构施工 | 45d | 2024-01-10 | 2024-03-04 | 116SS+15d | 2024-01-20 | 2024-03-04 | 45d | 2024-01-20 | 2024-03-04 | 71d |  | finish no earlier than 2024-03-04 |
| 123 | 2.3.1.2 | 29、30、32、36段地下二层结构施工 | 45d | 2024-01-15 | 2024-03-09 | 117SS+15d | 2024-01-25 | 2024-03-09 | 45d | 2024-01-25 | 2024-03-09 | 66d |  | finish no earlier than 2024-03-09 |
| 124 | 2.3.1.3 | 34、37、41段地下二层结构施工 | 45d | 2024-03-11 | 2024-04-24 | 118SS+15d | 2024-01-30 | 2024-03-14 | 45d | 2024-01-30 | 2024-03-14 | 20d |  | finish no earlier than 2024-03-14 |
| 125 | 2.3.1.4 | 31、33、35、40段地下二层结构施工 | 45d | 2024-03-31 | 2024-05-14 | 119SS+15d | 2024-03-02 | 2024-04-15 | 45d | 2024-03-02 | 2024-04-15 | 0d |  | finish no earlier than 2024-04-15 |
| 126 | 2.3.2 | 支撑拆撑 | 25d | 2024-05-25 | 2024-06-18 | 121FS+10d | 2024-04-26 | 2024-05-20 | 25d |  |  | 146d |  |  |
| 127 | 2.3.3 | **地下一层结构施工** | 55d | 2024-06-04 | 2024-07-28 | 121FS+20d | 2024-04-26 | 2024-06-09 | 45d | 2024-04-26 | 2024-06-09 | 0d |  |  |
| 128 | 2.3.3.1 | 26、27、28段地下一层结构施工 | 45d | 2024-06-04 | 2024-07-18 |  | 2024-04-26 | 2024-06-09 | 45d | 2024-04-26 | 2024-06-09 | 0d |  |  |
| 129 | 2.3.3.2 | 29、30、32、36段地下一层结构施工 | 45d | 2024-06-04 | 2024-07-18 |  | 2024-04-26 | 2024-06-09 | 45d | 2024-04-26 | 2024-06-09 | 0d |  |  |
| 130 | 2.3.3.3 | 34、37、41段地下一层结构施工 | 45d | 2024-06-14 | 2024-07-28 | 128SS+10d | 2024-04-26 | 2024-06-09 | 45d | 2024-04-26 | 2024-06-09 | 0d |  |  |
| 131 | 2.3.3.4 | 31、33、35、40段地下一层结构施工 | 45d | 2024-06-14 | 2024-07-28 | 129SS+10d | 2024-04-26 | 2024-06-09 | 45d | 2024-04-26 | 2024-06-09 | 0d |  |  |
| 132 | 2.4 | **地下室外墙、顶板防水** | 30d | 2024-07-29 | 2024-08-27 |  | 2024-06-17 | 2024-07-06 | 20d | 2024-06-17 | 2024-07-06 | 111d | 0d |  |
| 133 | 2.4.1 | 26、27、28段地下室外墙、顶板防水 | 15d | 2024-07-29 | 2024-08-12 | 128FS+10d | 2024-06-17 | 2024-06-21 | 5d | 2024-06-17 | 2024-06-21 | 111d | 0d |  |
| 134 | 2.4.2 | 29、30、32、36段地下室外墙、顶板防水 | 15d | 2024-07-29 | 2024-08-12 | 129FS+10d | 2024-06-22 | 2024-06-26 | 5d | 2024-06-22 | 2024-06-26 | 111d | 0d |  |
| 135 | 2.4.3 | 34、37、41段地下室外墙、顶板防水 | 15d | 2024-08-13 | 2024-08-27 | 133 | 2024-06-27 | 2024-07-01 | 5d | 2024-06-27 | 2024-07-01 | 111d | 0d |  |
| 136 | 2.4.4 | 31、33、35、40段地下室外墙、顶板防水 | 15d | 2024-08-13 | 2024-08-27 | 134 | 2024-07-02 | 2024-07-06 | 5d | 2024-07-02 | 2024-07-06 | 111d | 0d |  |

Notes:
- 115: 基础及换撑施工完成后拆除混凝土支撑
- 120: 跨春节假期，2024年2月9日春节

| ID | WBS | Task | Duration | Start | Finish | Predecessors | Baseline start | Baseline finish | Baseline duration | Baseline 1 start | Baseline 1 finish | Total slack | Free slack | Constraint |
| --- | --- | --- | --- | --- | --- | --- | --- | --- | --- | --- | --- | --- | --- | --- |
| 137 | 2.5 | **室外土方回填** | 16d | 2024-08-28 | 2024-09-12 | 132 | 2024-07-07 | 2024-07-26 | 20d | 2024-07-07 | 2024-07-26 | 111d | 69d |  |
| 138 | 2.5.1 | 26、27、28段室外土方回填 | 15d | 2024-08-28 | 2024-09-11 | 133FS+1d | 2024-07-07 | 2024-07-11 | 5d | 2024-07-07 | 2024-07-11 | 112d |  |  |
| 139 | 2.5.2 | 29、30、32、36段室外土方回填 | 15d | 2024-08-28 | 2024-09-11 | 134FS+1d | 2024-07-12 | 2024-07-16 | 5d | 2024-07-12 | 2024-07-16 | 112d |  |  |
| 140 | 2.5.3 | 34、37、41段室外土方回填 | 15d | 2024-08-29 | 2024-09-12 | 135FS+1d | 2024-07-17 | 2024-07-21 | 5d | 2024-07-17 | 2024-07-21 | 111d |  |  |
| 141 | 2.5.4 | 31、33、35、40段室外土方回填 | 15d | 2024-08-29 | 2024-09-12 | 136FS+1d | 2024-07-22 | 2024-07-26 | 5d | 2024-07-22 | 2024-07-26 | 111d |  |  |
| 142 | 2.6 | 地上结构施工 | 60d | 2024-07-29 | 2024-09-26 | 127 | 2024-06-10 | 2024-09-07 | 90d | 2024-06-10 | 2024-09-07 | 0d |  |  |
| 143 | 2.7 | 二次结构施工 | 45d | 2024-09-27 | 2024-11-10 | 142 | 2024-09-08 | 2024-10-22 | 45d | 2024-09-08 | 2024-10-22 | 0d |  |  |
| 144 | 2.8 | 结构验收 | 10d | 2024-11-11 | 2024-11-20 | 143 | 2024-10-23 | 2024-11-01 | 10d | 2024-10-23 | 2024-11-01 | 0d |  |  |
| 145 | 2.9 | 屋面工程 | 30d | 2024-11-21 | 2024-12-20 | 144 | 2024-11-02 | 2024-12-01 | 30d | 2024-11-02 | 2024-12-01 | 101d |  |  |
| 146 | 2.10 | **地下室墙面、顶棚装修** | 80d | 2024-09-07 | 2024-11-25 | 120FS+40d | 2024-07-20 | 2024-10-07 | 80d | 2024-07-20 | 2024-10-07 | 106d |  |  |
| 147 | 2.10.1 | 26、27、28段地下室墙面、顶棚装修 | 20d | 2024-09-07 | 2024-09-26 |  | 2024-07-20 | 2024-08-08 | 20d | 2024-07-20 | 2024-08-08 | 106d | 0d |  |
| 148 | 2.10.2 | 29、30、32、36段地下室墙面、顶棚装修 | 20d | 2024-09-27 | 2024-10-16 | 147 | 2024-08-09 | 2024-08-28 | 20d | 2024-08-09 | 2024-08-28 | 106d | 0d |  |
| 149 | 2.10.3 | 34、37、41段地下室墙面、顶棚装修 | 20d | 2024-10-17 | 2024-11-05 | 148 | 2024-08-29 | 2024-09-17 | 20d | 2024-08-29 | 2024-09-17 | 106d | 0d |  |
| 150 | 2.10.4 | 31、33、35、40段地下室墙面、顶棚装修 | 20d | 2024-11-06 | 2024-11-25 | 149 | 2024-09-18 | 2024-10-07 | 20d | 2024-09-18 | 2024-10-07 | 106d | 0d |  |
| 151 | 2.11 | **地下室地面施工** | 80d | 2024-09-27 | 2024-12-15 |  | 2024-08-09 | 2024-10-27 | 80d | 2024-08-23 | 2024-10-27 | 106d |  |  |
| 152 | 2.11.1 | 26、27、28段地下室地面施工 | 20d | 2024-09-27 | 2024-10-16 | 147 | 2024-08-09 | 2024-08-28 | 20d | 2024-08-23 | 2024-09-11 | 166d |  |  |
| 153 | 2.11.2 | 29、30、32、36段地下室地面施工 | 20d | 2024-10-17 | 2024-11-05 | 148 | 2024-08-29 | 2024-09-17 | 20d | 2024-09-04 | 2024-09-23 | 146d |  |  |
| 154 | 2.11.3 | 34、37、41段地下室地面施工 | 20d | 2024-11-06 | 2024-11-25 | 149 | 2024-09-18 | 2024-10-07 | 20d | 2024-09-18 | 2024-10-07 | 126d |  |  |
| 155 | 2.11.4 | 31、33、35、40段地下室地面施工 | 20d | 2024-11-26 | 2024-12-15 | 150 | 2024-10-08 | 2024-10-27 | 20d | 2024-10-08 | 2024-10-27 | 106d |  |  |
| 156 | 2.12 | 商业粗装修施工 | 45d | 2024-11-21 | 2025-01-04 | 144 | 2024-11-02 | 2024-12-16 | 45d | 2024-11-02 | 2024-12-16 | 0d |  |  |
| 157 | 2.13 | 商业外墙施工 | 60d | 2024-11-21 | 2025-01-19 | 144 | 2024-11-02 | 2024-12-31 | 60d | 2024-11-02 | 2024-12-31 | 71d |  |  |
| 158 | 2.14 | 电梯安装、调试 | 60d | 2024-11-21 | 2025-01-19 | 144 | 2024-11-02 | 2024-12-31 | 60d | 2024-11-02 | 2024-12-31 | 71d |  |  |
| 159 | 2.15 | 给排水工程 | 60d | 2024-11-21 | 2025-01-19 | 144 | 2024-11-02 | 2024-12-31 | 60d | 2024-11-11 | 2025-01-09 | 71d |  |  |
| 160 | 2.16 | 电气工程 | 60d | 2024-11-21 | 2025-01-19 | 144 | 2024-11-02 | 2024-12-31 | 60d | 2024-11-11 | 2025-01-09 | 71d |  |  |
| 161 | 2.17 | 通风工程 | 60d | 2024-11-21 | 2025-01-19 | 144 | 2024-11-02 | 2024-12-31 | 60d | 2024-11-11 | 2025-01-09 | 71d |  |  |
| 162 | 2.18 | 智能化工程 | 60d | 2024-11-21 | 2025-01-19 | 144 | 2024-11-02 | 2024-12-31 | 60d | 2024-11-11 | 2025-01-09 | 71d |  |  |
| 163 | 2.19 | 消防工程 | 60d | 2024-11-21 | 2025-01-19 | 144 | 2024-11-02 | 2024-12-31 | 60d | 2024-11-11 | 2025-01-09 | 71d |  |  |
| 164 | 2.20 | 商业精装修 | 116d | 2024-12-06 | 2025-03-31 | 156SS+15d |  |  |  |  |  | 0d |  |  |
| 165 | 2.21 | 室外市政工程 | 59d | 2024-11-21 | 2025-01-18 | 144, 137 | 2024-11-02 | 2024-12-30 | 59d | 2024-11-01 | 2024-12-30 | 42d | 0d |  |
| 166 | 2.22 | 室外景观铺装 | 30d | 2025-01-19 | 2025-02-17 | 165 | 2024-12-31 | 2025-01-29 | 30d | 2024-12-31 | 2025-01-29 | 42d |  | finish no earlier than 2025-01-14 |

Notes:
- 142: 钢结构（2023年12月30日前完成图纸深化工作）。
- 144: 地下室提前进行结构验收
- 157: 目前无设计图纸，考虑公共区域粗装修施工。
- 159: 包括地下室及主楼
- 160: 包括地下室及主楼
- 161: 包括地下室及主楼
- 162: 包括地下室及主楼
- 163: 包括地下室及主楼
- 166: 2025年1月28日春节

| ID | WBS | Task | Duration | Start | Finish | Predecessors | Baseline start | Baseline finish | Baseline duration | Baseline 1 start | Baseline 1 finish | Total slack | Free slack | Constraint |
| --- | --- | --- | --- | --- | --- | --- | --- | --- | --- | --- | --- | --- | --- | --- |
| 167 | 3 | **B区施工** | 524d | 2023-10-15 | 2025-03-31 |  | 2023-10-15 | 2025-02-19 | 494d | 2023-10-15 | 2025-02-12 | 0d |  |  |
| 168 | 3.1 | **土方开挖** | 233d | 2023-10-15 | 2024-06-13 |  | 2023-10-15 | 2024-05-10 | 209d | 2023-10-15 | 2024-05-10 | 104d |  |  |
| 169 | 3.1.1 | **首层土方开挖** | 30d | 2023-10-15 | 2023-11-13 |  | 2023-10-15 | 2023-11-13 | 30d | 2023-10-15 | 2023-11-13 | 104d |  |  |
| 170 | 3.1.1.1 | 14、15、16段首层土方开挖 | 15d | 2023-10-15 | 2023-10-29 |  | 2023-10-15 | 2023-10-29 | 15d | 2023-10-15 | 2023-10-29 | 114d | 0d | finish no earlier than 2023-10-29 |
| 171 | 3.1.1.2 | 17、22、23段首层土方开挖 | 15d | 2023-10-20 | 2023-11-03 | 170SS+5d | 2023-10-20 | 2023-11-03 | 15d | 2023-10-20 | 2023-11-03 | 99d | 0d |  |
| 172 | 3.1.1.3 | 18、19、20、21段首层土方开挖 | 15d | 2023-10-25 | 2023-11-08 | 171SS+5d | 2023-10-25 | 2023-11-08 | 15d | 2023-10-25 | 2023-11-08 | 99d | 0d |  |
| 173 | 3.1.1.4 | 12、13段首层土方开挖 | 15d | 2023-10-30 | 2023-11-13 | 172SS+5d | 2023-10-30 | 2023-11-13 | 15d | 2023-10-30 | 2023-11-13 | 99d | 0d |  |
| 174 | 3.1.1.5 | 24、25段首层土方开挖 | 15d | 2023-10-30 | 2023-11-13 | 173SS |  |  |  |  |  | 494d |  |  |
| 175 | 3.1.2 | **混凝土支撑施工** | 35d | 2023-10-30 | 2023-12-03 |  | 2023-10-30 | 2023-12-03 | 35d | 2023-10-30 | 2023-12-03 | 99d | 0d |  |
| 176 | 3.1.2.1 | 14、15、16段混凝土支撑施工 | 20d | 2023-10-30 | 2023-11-18 | 170 | 2023-10-30 | 2023-11-18 | 20d | 2023-10-30 | 2023-11-18 | 114d |  |  |
| 177 | 3.1.2.2 | 17、22、23段混凝土支撑施工 | 20d | 2023-11-04 | 2023-11-23 | 171 | 2023-11-04 | 2023-11-23 | 20d | 2023-11-04 | 2023-11-23 | 109d |  |  |
| 178 | 3.1.2.3 | 18、19、20、21段混凝土支撑施工 | 20d | 2023-11-09 | 2023-11-28 | 172 | 2023-11-09 | 2023-11-28 | 20d | 2023-11-09 | 2023-11-28 | 104d |  |  |
| 179 | 3.1.2.4 | 12、13段混凝土支撑施工 | 20d | 2023-11-14 | 2023-12-03 | 173 | 2023-11-14 | 2023-12-03 | 20d | 2023-11-14 | 2023-12-03 | 99d | 0d |  |
| 180 | 3.1.2.5 | 24、25段混凝土支撑施工 | 20d | 2023-11-14 | 2023-12-03 | 179SS |  |  |  |  |  | 99d |  |  |
| 181 | 3.1.3 | **第二层土方开挖** | 173d | 2023-12-14 | 2024-06-13 | 175FS+10d | 2023-12-14 | 2024-05-10 | 149d | 2023-12-14 | 2024-05-10 | 99d |  |  |
| 182 | 3.1.3.1 | 14、15、16段第二层土方开挖 | 28d | 2023-12-14 | 2024-01-10 |  | 2023-12-14 | 2024-01-02 | 20d | 2023-12-14 | 2024-01-02 | 99d | 0d |  |
| 183 | 3.1.3.2 | 17、22、23段第二层土方开挖 | 25d | 2023-12-24 | 2024-01-17 | 182SS+10d | 2023-12-24 | 2024-01-12 | 20d | 2023-12-24 | 2024-01-12 | 319d | 0d |  |
| 184 | 3.1.3.3 | 18、19、20、21段第二层土方开挖 | 30d | 2024-02-21 | 2024-03-21 | 183SS+10d, 36FS+10d | 2024-03-19 | 2024-04-07 | 20d | 2024-03-19 | 2024-04-07 | 280d | 0d |  |
| 185 | 3.1.3.4 | 12、13段第二层土方开挖 | 20d | 2024-04-24 | 2024-05-13 | 42 | 2024-04-26 | 2024-05-10 | 15d | 2024-04-26 | 2024-05-10 | 242d | 0d |  |
| 186 | 3.1.3.5 | 24、25段第二层土方开挖 | 20d | 2024-05-25 | 2024-06-13 | 121FS+10d |  |  |  |  |  | 211d | 0d |  |
| 187 | 3.2 | **基础施工** | 190d | 2023-12-17 | 2024-07-03 |  | 2024-01-03 | 2024-07-14 | 194d | 2024-01-03 | 2024-07-14 | 99d |  |  |
| 188 | 3.2.1 | 桩基处理及检测 | 30d | 2024-01-11 | 2024-02-19 | 182 | 2024-01-03 | 2024-02-01 | 30d | 2024-01-03 | 2024-02-01 | 406d |  | finish no earlier than 2024-01-31 |
| 189 | 3.2.2 | **垫层、砖胎模施工** | 173d | 2023-12-17 | 2024-06-16 |  | 2024-01-03 | 2024-05-25 | 144d | 2024-01-03 | 2024-05-25 | 99d |  |  |
| 190 | 3.2.2.1 | 14、15、16段垫层、砖胎模施工 | 28d | 2023-12-17 | 2024-01-13 | 182SS+3d | 2024-01-03 | 2024-01-17 | 15d | 2024-01-03 | 2024-01-17 | 99d | 0d |  |
| 191 | 3.2.2.2 | 17、22、23段垫层、砖胎模施工 | 25d | 2023-12-27 | 2024-01-20 | 183SS+3d | 2024-01-13 | 2024-01-27 | 15d | 2024-01-13 | 2024-01-27 | 414d | 0d |  |
| 192 | 3.2.2.3 | 18、19、20、21段垫层、砖胎模施工 | 30d | 2024-02-24 | 2024-03-24 | 184SS+3d | 2024-04-08 | 2024-04-22 | 15d | 2024-04-08 | 2024-04-22 | 280d | 0d |  |
| 193 | 3.2.2.4 | 12、13段垫层、砖胎模施工 | 20d | 2024-04-27 | 2024-05-16 | 185SS+3d | 2024-05-11 | 2024-05-25 | 15d | 2024-05-11 | 2024-05-25 | 242d | 0d |  |
| 194 | 3.2.2.5 | 24、25段垫层、砖胎模施工 | 20d | 2024-05-28 | 2024-06-16 | 186SS+3d |  |  |  |  |  | 211d | 0d |  |

Notes:
- 169: 目前受临近地块堆土影响，制约施工
- 184: 待A1区施工至正负零结构开挖
- 185: 待A2区施工至正负零结构开挖
- 187: 跨春节假期，2024年2月9日春节

| ID | WBS | Task | Duration | Start | Finish | Predecessors | Baseline start | Baseline finish | Baseline duration | Baseline 1 start | Baseline 1 finish | Total slack | Free slack | Constraint |
| --- | --- | --- | --- | --- | --- | --- | --- | --- | --- | --- | --- | --- | --- | --- |
| 195 | 3.2.3 | **防水施工** | 173d | 2023-12-18 | 2024-06-17 |  | 2024-01-18 | 2024-06-09 | 144d | 2024-01-18 | 2024-06-09 | 99d |  |  |
| 196 | 3.2.3.1 | 14、15、16段防水施工 | 28d | 2023-12-18 | 2024-01-14 | 190SS+1d | 2024-01-18 | 2024-02-01 | 15d | 2024-01-18 | 2024-02-01 | 99d | 0d |  |
| 197 | 3.2.3.2 | 17、22、23段防水施工 | 25d | 2023-12-28 | 2024-01-21 | 191SS+1d | 2024-01-28 | 2024-02-11 | 15d | 2024-01-28 | 2024-02-11 | 414d | 0d |  |
| 198 | 3.2.3.3 | 18、19、20、21段防水施工 | 30d | 2024-02-25 | 2024-03-25 | 192SS+1d | 2024-04-23 | 2024-05-07 | 15d | 2024-04-23 | 2024-05-07 | 280d | 0d |  |
| 199 | 3.2.3.4 | 12、13段防水施工 | 20d | 2024-04-28 | 2024-05-17 | 193SS+1d | 2024-05-26 | 2024-06-09 | 15d | 2024-05-26 | 2024-06-09 | 242d | 0d |  |
| 200 | 3.2.3.5 | 24、25段防水施工 | 20d | 2024-05-29 | 2024-06-17 | 194SS+1d |  |  |  |  |  | 211d | 0d |  |
| 201 | 3.2.4 | **基础结构施工（含换撑）** | 188d | 2023-12-19 | 2024-07-03 |  | 2024-02-02 | 2024-07-14 | 164d | 2024-02-02 | 2024-07-14 | 99d |  |  |
| 202 | 3.2.4.1 | 14、15、16段基础结构施工 | 35d | 2023-12-19 | 2024-01-22 | 196SS+1d | 2024-02-02 | 2024-03-07 | 35d | 2024-02-02 | 2024-03-07 | 99d | 0d |  |
| 203 | 3.2.4.2 | 17、22、23段基础结构施工 | 35d | 2023-12-29 | 2024-02-01 | 197SS+1d | 2024-02-12 | 2024-03-17 | 35d | 2024-02-12 | 2024-03-17 | 414d |  |  |
| 204 | 3.2.4.3 | 18、19、20、21段基础结构施工 | 35d | 2024-02-26 | 2024-03-31 | 198SS+1d | 2024-05-08 | 2024-06-11 | 35d | 2024-05-08 | 2024-06-11 | 280d | 0d |  |
| 205 | 3.2.4.4 | 12、13段基础结构施工 | 35d | 2024-04-29 | 2024-06-02 | 199SS+1d | 2024-06-10 | 2024-07-14 | 35d | 2024-06-10 | 2024-07-14 | 242d | 0d |  |
| 206 | 3.2.4.5 | 24、25段基础结构施工 | 35d | 2024-05-30 | 2024-07-03 | 200SS+1d |  |  |  |  |  | 211d | 0d |  |
| 207 | 3.3 | **地下结构施工** | 233d | 2024-01-03 | 2024-09-01 |  | 2024-03-08 | 2024-10-02 | 209d | 2024-03-08 | 2024-10-02 | 43d |  |  |
| 208 | 3.3.1 | **地下二层结构施工（含换撑）** | 183d | 2024-01-03 | 2024-07-13 |  | 2024-03-08 | 2024-08-18 | 164d | 2024-03-08 | 2024-08-18 | 43d |  |  |
| 209 | 3.3.1.1 | 14、15、16段地下二层结构施工 | 30d | 2024-01-03 | 2024-02-01 | 202SS+15d | 2024-03-08 | 2024-04-26 | 50d | 2024-03-08 | 2024-04-26 | 99d | 0d |  |
| 210 | 3.3.1.2 | 17、22、23段地下二层结构施工 | 30d | 2024-02-25 | 2024-03-25 |  | 2024-03-18 | 2024-05-06 | 50d | 2024-03-18 | 2024-05-06 | 0d |  | start no earlier than 2024-02-25 |
| 211 | 3.3.1.3 | 18、19、20、21段地下二层结构施工 | 40d | 2024-03-12 | 2024-04-20 | 204SS+15d | 2024-06-12 | 2024-07-16 | 35d | 2024-06-12 | 2024-07-16 | 280d | 0d |  |
| 212 | 3.3.1.4 | 12、13段地下二层结构施工 | 30d | 2024-05-14 | 2024-06-12 | 205SS+15d | 2024-07-15 | 2024-08-18 | 35d | 2024-07-15 | 2024-08-18 | 242d | 0d |  |
| 213 | 3.3.1.5 | 24、25段地下二层结构施工 | 30d | 2024-06-14 | 2024-07-13 | 206SS+15d |  |  |  |  |  | 211d | 0d |  |
| 214 | 3.3.2 | **地下一层结构施工（含拆撑）** | 188d | 2024-02-27 | 2024-09-01 |  | 2024-04-27 | 2024-10-02 | 159d | 2024-05-25 | 2024-10-02 | 43d |  |  |
| 215 | 3.3.2.1 | 14、15段地下一层结构施工 | 40d | 2024-02-27 | 2024-04-06 | 209FS+15d | 2024-04-27 | 2024-06-15 | 50d | 2024-05-25 | 2024-07-13 | 99d | 0d |  |
| 216 | 3.3.2.2 | 16、17段地下一层结构施工 | 40d | 2024-03-06 | 2024-04-14 | 210SS+10d |  |  |  |  |  | 351d |  |  |
| 217 | 3.3.2.3 | 22、23段地下一层结构施工 | 40d | 2024-04-10 | 2024-05-19 | 210FS+15d | 2024-05-07 | 2024-06-25 | 50d | 2024-05-30 | 2024-07-18 | 0d |  |  |
| 218 | 3.3.2.4 | 18、19、20、21段地下一层结构施工 | 50d | 2024-05-06 | 2024-06-24 | 211FS+15d | 2024-08-29 | 2024-10-02 | 35d | 2024-08-29 | 2024-10-02 | 280d |  |  |
| 219 | 3.3.2.5 | 12、13段地下一层结构施工 | 40d | 2024-06-23 | 2024-08-01 | 212FS+10d | 2024-08-29 | 2024-10-02 | 35d | 2024-08-29 | 2024-10-02 | 242d |  |  |
| 220 | 3.3.2.6 | 24、25段地下一层结构施工 | 40d | 2024-07-24 | 2024-09-01 | 213FS+10d |  |  |  |  |  | 211d |  |  |
| 221 | 3.4 | 地下室外墙、顶板防水 | 150d | 2024-04-17 | 2024-09-13 | 215FS+10d | 2024-10-10 | 2024-11-06 | 28d | 2024-10-10 | 2024-11-06 | 99d | 0d |  |
| 222 | 3.5 | 室外土方回填 | 150d | 2024-05-07 | 2024-10-03 | 221SS+20d | 2024-11-12 | 2024-12-01 | 20d | 2024-11-12 | 2024-12-01 | 99d | 3d |  |
| 223 | 3.6 | 地上结构施工 | 110d | 2024-05-30 | 2024-09-16 | 217FS+10d | 2024-07-06 | 2024-09-23 | 80d | 2024-07-29 | 2024-10-16 | 0d |  |  |
| 224 | 3.7 | 二次结构施工 | 90d | 2024-06-29 | 2024-09-26 | 223SS+30d | 2024-09-24 | 2024-10-13 | 20d | 2024-10-17 | 2024-11-05 | 0d |  |  |
| 225 | 3.8 | 结构验收 | 10d | 2024-09-27 | 2024-10-06 | 224 | 2024-10-14 | 2024-10-23 | 10d | 2024-11-06 | 2024-11-15 | 0d |  |  |
| 226 | 3.9 | 屋面工程 | 30d | 2024-10-07 | 2024-11-05 | 225 | 2024-10-24 | 2024-11-22 | 30d | 2024-11-16 | 2024-12-15 | 146d |  |  |
| 227 | 3.10 | 地下室墙面、顶棚装修 | 45d | 2024-10-07 | 2024-11-20 | 225 | 2024-10-03 | 2024-12-11 | 70d | 2024-09-08 | 2024-12-11 | 86d | 0d |  |
| 228 | 3.11 | 地下室地面施工 | 45d | 2024-11-21 | 2025-01-04 | 227 | 2024-10-23 | 2024-12-26 | 65d | 2024-10-06 | 2024-12-26 | 86d |  |  |
| 229 | 3.12 | 商业粗装修施工 | 45d | 2024-10-07 | 2024-11-20 | 225 | 2024-10-24 | 2024-12-07 | 45d | 2024-11-20 | 2025-01-03 | 0d |  |  |
| 230 | 3.13 | 商业外墙施工 | 60d | 2024-10-07 | 2024-12-05 | 225 | 2024-10-24 | 2024-12-22 | 60d | 2024-11-16 | 2025-01-14 | 116d |  |  |
| 231 | 3.14 | 电梯安装、调试 | 60d | 2024-10-07 | 2024-12-05 | 225 | 2024-10-24 | 2024-12-22 | 60d | 2024-11-24 | 2025-01-22 | 116d |  |  |
| 232 | 3.15 | 给排水工程 | 60d | 2024-10-07 | 2024-12-05 | 225 | 2024-10-24 | 2024-12-22 | 60d | 2024-11-16 | 2025-01-14 | 116d |  |  |
| 233 | 3.16 | 电气工程 | 60d | 2024-10-07 | 2024-12-05 | 225 | 2024-10-24 | 2024-12-22 | 60d | 2024-11-16 | 2025-01-14 | 116d |  |  |
| 234 | 3.17 | 通风工程 | 60d | 2024-10-07 | 2024-12-05 | 225 | 2024-10-24 | 2024-12-22 | 60d | 2024-11-16 | 2025-01-14 | 116d |  |  |
| 235 | 3.18 | 智能化工程 | 60d | 2024-10-07 | 2024-12-05 | 225 | 2024-10-24 | 2024-12-22 | 60d | 2024-11-16 | 2025-01-14 | 116d |  |  |
| 236 | 3.19 | 消防工程 | 60d | 2024-10-07 | 2024-12-05 | 225 | 2024-10-24 | 2024-12-22 | 60d | 2024-11-16 | 2025-01-14 | 116d |  |  |
| 237 | 3.20 | 商业精装修 | 161d | 2024-10-22 | 2025-03-31 | 229SS+15d |  |  |  |  |  | 0d |  |  |
| 238 | 3.21 | 室外市政工程 | 50d | 2024-10-07 | 2024-11-25 | 225, 222 | 2024-12-02 | 2025-01-20 | 50d | 2024-11-15 | 2025-01-13 | 96d | 0d |  |
| 239 | 3.22 | 室外景观铺装 | 30d | 2024-11-26 | 2024-12-25 | 238 | 2025-01-21 | 2025-02-19 | 30d | 2025-01-14 | 2025-02-12 | 96d |  |  |
| 240 | 3.23 | 正式电接通 | 180d | 2024-09-03 | 2025-03-01 | 242FF |  |  |  |  |  | 30d |  |  |

Notes:
- 201: 基础及换撑施工完成后拆除混凝土支撑
- 223: 钢结构（2023年12月30日前完成图纸深化工作）。
- 225: 地下室提前进行结构验收
- 229: 2025年1月28日春节
- 230: 目前无设计图纸，考虑公共区域粗装修施工。
- 232: 包括地下室及主楼
- 233: 包括地下室及主楼
- 234: 包括地下室及主楼
- 235: 包括地下室及主楼
- 236: 包括地下室及主楼
- 239: 2025年1月28日春节

| ID | WBS | Task | Duration | Start | Finish | Predecessors | Baseline start | Baseline finish | Baseline duration | Baseline 1 start | Baseline 1 finish | Total slack | Free slack | Constraint |
| --- | --- | --- | --- | --- | --- | --- | --- | --- | --- | --- | --- | --- | --- | --- |
| 241 | 4 | **竣工验收** | 50d | 2025-02-10 | 2025-03-31 |  | 2025-01-10 | 2025-03-31 | 81d | 2025-01-10 | 2025-03-31 | 0d |  |  |
| 242 | 4.1 | 机电综合调试及调整 | 20d | 2025-02-10 | 2025-03-01 |  | 2025-02-10 | 2025-03-01 | 20d | 2025-02-10 | 2025-03-01 | 30d | 0d | finish no earlier than 2025-03-01 |
| 243 | 4.2 | 人防验收 | 20d | 2025-02-11 | 2025-03-02 | 242SS+1d | 2025-02-11 | 2025-03-02 | 20d | 2025-02-11 | 2025-03-02 | 0d |  |  |
| 244 | 4.3 | 节能验收 | 20d | 2025-02-12 | 2025-03-03 | 243SS+1d | 2025-02-12 | 2025-03-03 | 20d | 2025-02-12 | 2025-03-03 | 0d |  |  |
| 245 | 4.4 | 室外景观联合验收 | 25d | 2025-02-13 | 2025-03-09 | 244SS+1d | 2025-02-13 | 2025-03-09 | 25d | 2025-02-13 | 2025-03-09 | 0d |  |  |
| 246 | 4.5 | 消防验收 | 30d | 2025-02-14 | 2025-03-15 | 245SS+1d | 2025-02-14 | 2025-03-15 | 30d | 2025-02-14 | 2025-03-15 | 0d |  |  |
| 247 | 4.6 | 环境验收 | 20d | 2025-02-15 | 2025-03-06 | 246SS+1d | 2025-02-15 | 2025-03-06 | 20d | 2025-02-15 | 2025-03-06 | 0d |  |  |
| 248 | 4.7 | 规划验收 | 20d | 2025-02-16 | 2025-03-07 | 247SS+1d | 2025-02-16 | 2025-03-07 | 20d | 2025-02-16 | 2025-03-07 | 0d |  |  |
| 249 | 4.8 | 联合验收 | 15d | 2025-02-17 | 2025-03-03 | 248SS+1d | 2025-02-17 | 2025-03-03 | 15d | 2025-02-17 | 2025-03-03 | 0d |  |  |
| 250 | 4.9 | 竣工验收及备案 | 28d | 2025-03-04 | 2025-03-31 | 249 | 2025-03-04 | 2025-03-31 | 28d | 2025-03-04 | 2025-03-31 | 0d |  |  |
