# 2024年施工总进度计划

Schedule from MS Project, 2023-09-25 to 2023-10-19.

## Calendars

- 标准: Mon-Sun 08:00-12:00, 13:00-17:00.

## Schedule

| ID | WBS | Task | Duration | Start | Finish | Predecessors | Baseline start | Baseline finish | Baseline duration | Baseline 1 start | Baseline 1 finish | Total slack | Free slack | Constraint |
| --- | --- | --- | --- | --- | --- | --- | --- | --- | --- | --- | --- | --- | --- | --- |
| 1 | 1 | **A1区施工** | 25d | 2023-09-25 | 2023-10-19 |  | 2023-09-25 | 2025-01-29 | 493d | 2023-09-25 | 2025-01-29 | 0d |  |  |
| 2 | 1.1 | **土方开挖** | 25d | 2023-09-25 | 2023-10-19 |  | 2023-09-25 | 2023-12-27 | 94d | 2023-09-25 | 2023-12-27 | 0d |  |  |
| 3 | 1.1.1 | **首层土方开挖** | 18d | 2023-09-25 | 2023-10-12 |  | 2023-09-25 | 2023-10-19 | 25d | 2023-09-25 | 2023-10-19 | 0d |  |  |
| 4 | 1.1.1.1 | 2、3、6段首层土方开挖 | 10d | 2023-09-25 | 2023-10-04 |  | 2023-09-25 | 2023-10-04 | 10d | 2023-09-25 | 2023-10-04 | 0d |  |  |
| 5 | 1.1.1.2 | 1、4、5段首层土方开挖 | 10d | 2023-09-30 | 2023-10-09 | 4SS+5d | 2023-09-30 | 2023-10-09 | 10d | 2023-09-30 | 2023-10-09 | 10d |  |  |
| 6 | 1.1.1.3 | 7、8、9段首层土方开挖 | 10d | 2023-09-28 | 2023-10-07 |  | 2023-10-05 | 2023-10-14 | 10d | 2023-10-05 | 2023-10-14 | 7d | 0d | start no earlier than 2023-09-28 |
| 7 | 1.1.1.4 | 10、11、38段首层土方开挖 | 10d | 2023-10-03 | 2023-10-12 | 6SS+5d | 2023-10-10 | 2023-10-19 | 10d | 2023-10-10 | 2023-10-19 | 7d |  |  |
| 8 | 1.1.2 | **混凝土支撑施工** | 10d | 2023-10-10 | 2023-10-19 |  | 2023-10-10 | 2023-11-03 | 25d | 2023-10-10 | 2023-11-03 | 0d |  |  |
| 9 | 1.1.2.1 | 2、3、6段混凝土支撑施工 | 10d | 2023-10-10 | 2023-10-19 | 4SS+15d | 2023-10-10 | 2023-10-19 | 10d | 2023-10-10 | 2023-10-19 | 0d |  |  |
